# ProjectRoadmate

How a schedule from MS Project changed from version to version. A marks actual dates.

## Version 1 (data date 2008-08-04, saved 2008-08-06, file ProjectRoadmateProjectPlan.mpp)

Note of the change: Project plan added to repository

| ID | WBS | Task | Duration | Start | Finish | Predecessors | Complete | Total float | Constraint |
| --- | --- | --- | --- | --- | --- | --- | --- | --- | --- |
| 1 | 1 | **Prototype1** | 15d | 2008-07-22 A | 2008-08-12 |  | 74% | 44d |  |
| 2 | 1.1 | **Initial Analysis** | 6d | 2008-07-22 A | 2008-07-29 |  | 95% | 49.4d |  |
| 3 |  | Scope for Prorotype1 | 1d | 2008-07-22 A | 2008-07-22 A |  | 100% |  | start no earlier than 2008-07-22 |
| 4 |  | Project Name | 0.2d | 2008-07-22 A | 2008-07-22 A |  | 100% |  |  |
| 5 |  | Create Google Account | 0.2d | 2008-07-22 A | 2008-07-22 A |  | 100% |  |  |
| 6 |  | Use Cases | 1w | 2008-07-23 A | 2008-07-29 | 5 | 95% | 49.4d |  |
| 7 |  | Domain Model | 1w | 2008-07-23 A | 2008-07-29 |  | 90% | 49.4d | start no earlier than 2008-07-23 |
| 8 |  | RMMM | 3d | 2008-07-23 A | 2008-07-25 A |  | 100% |  | start no earlier than 2008-07-23 |
| 9 | 1.2 | **Design of Prototype1** | 6d | 2008-07-30 A | 2008-08-06 | 2 | 89% | 47d |  |
| 10 |  | Main page | 2d | 2008-07-30 A | 2008-07-31 | 2 | 90% | 50.7d |  |
| 11 |  | Base Template page | 3d | 2008-08-01 A | 2008-08-05 | 10 | 90% | 48d |  |
| 12 |  | Create Ride Offer page | 2d | 2008-07-30 A | 2008-07-31 A | 2 | 100% |  |  |
| 13 |  | Edit Ride Offer page | 2d | 2008-08-01 A | 2008-08-04 A | 12 | 100% |  |  |
| 14 |  | Search Ride Offers page | 2d | 2008-08-05 A | 2008-08-06 | 13 | 85% | 47d |  |
| 15 |  | View Ride Offer page | 2d | 2008-07-30 A | 2008-07-31 | 2 | 85% | 47.7d |  |
| 16 |  | About page | 2d | 2008-08-01 A | 2008-08-04 | 15 | 80% | 46.1d |  |
| 17 |  | Support page | 2d | 2008-08-05 A | 2008-08-06 | 16 | 80% | 44.5d |  |
| 18 |  | Testing phase1 | 0.5w | 2008-08-07 | 2008-08-11 | 17 |  | 44.5d |  |
| 19 |  | Report1 | 1w | 2008-08-04 | 2008-08-08 |  |  | 0d | finish no earlier than 2008-08-08 |
| 20 |  | Prototype1 Presentation | 0d | 2008-08-12 | 2008-08-12 |  |  | 14d | start no earlier than 2008-08-12 |
| 21 |  | Get Familiar with Python and Google API Engine | 16d? | 2008-07-22 A | 2008-08-12 |  | 55% | 23.5d | finish no earlier than 2008-08-12 |
| 22 | 3 | **Prototype2** | 19.5d | 2008-08-13 | 2008-09-23 | 20 |  | 13d |  |
| 23 |  | Scope of Prototype2 | 2d | 2008-08-13 | 2008-08-14 | 21 |  | 23.5d |  |
| 24 |  | Design of Prototype2 | 2.5w | 2008-08-15 | 2008-09-16 | 23 |  | 23.5d |  |
| 25 |  | Testing phase2 | 1w | 2008-09-16 | 2008-09-23 | 24 |  | 23.5d |  |
| 26 |  | Report2 | 1w | 2008-09-15 | 2008-09-19 |  |  | 0d | finish no earlier than 2008-09-19 |
| 27 |  | Prototype2 Presentation | 0d | 2008-09-23 | 2008-09-23 |  |  | 7d | start no earlier than 2008-09-23 |
| 28 | 4 | **Final Product** | 20d | 2008-09-23 | 2008-10-21 | 27 |  | 4d |  |
| 29 |  | Scope of Final version | 2d | 2008-09-23 | 2008-09-24 | 27 |  | 7d |  |
| 30 |  | Design of Final version | 2w | 2008-09-26 | 2008-10-09 | 29 |  | 6d | finish no earlier than 2008-10-09 |
| 31 |  | Testing Final Phase | 1w | 2008-10-10 | 2008-10-16 | 30 |  | 6d | start no earlier than 2008-10-09 |
| 32 |  | Final Documentation | 1w | 2008-10-13 | 2008-10-17 |  |  | 0d | finish no earlier than 2008-10-17 |
| 33 |  | Presentation & Demonstration | 0d | 2008-10-21 | 2008-10-21 |  |  | 4d | start no earlier than 2008-10-21 |
| 34 |  | Reflection Essay | 4d? | 2008-10-21 | 2008-10-24 |  |  | 0d | finish no earlier than 2008-10-24 |

## Version 2 (data date 2008-08-04, saved 2008-08-13, file ProjectRoadmateProjectPlan.mpp)

Note of the change: Gantt chart updated, updated pdf file also added

Last finish stays 2008-10-24. Complete tasks 6 → 15.

Changed:

| ID | Task | Start | Finish | Complete | Total float |
| --- | --- | --- | --- | --- | --- |
| 1 | **Prototype1** |  |  | 74% → 99% |  |
| 2 | **Initial Analysis** |  | 2008-07-29 A | 95% → 100% | 49.4d → none |
| 6 | Use Cases |  | 2008-07-29 A | 95% → 100% | 49.4d → none |
| 7 | Domain Model |  | 2008-07-29 A | 90% → 100% | 49.4d → none |
| 9 | **Design of Prototype1** |  | 2008-08-06 A | 89% → 100% | 47d → none |
| 10 | Main page |  | 2008-07-31 A | 90% → 100% | 50.7d → none |
| 11 | Base Template page |  | 2008-08-05 A | 90% → 100% | 48d → none |
| 14 | Search Ride Offers page |  | 2008-08-06 A | 85% → 100% | 47d → none |
| 15 | View Ride Offer page |  | 2008-07-31 A | 85% → 100% | 47.7d → none |
| 16 | About page |  | 2008-08-04 A | 80% → 100% | 46.1d → none |
| 17 | Support page |  | 2008-08-06 A | 80% → 100% | 44.5d → none |
| 18 | Testing phase1 | 2008-08-07 A |  | 0% → 95% |  |
| 19 | Report1 | 2008-08-04 A | 2008-08-08 A | 0% → 100% | 0d → none |
| 21 | Get Familiar with Python and Google API Engine |  |  | 55% → 99% | 23.5d → 24.1d |
| 22 | **Prototype2** | 2008-08-13 A |  | 0% → 2% | 13d → 23.5d |
| 23 | Scope of Prototype2 | 2008-08-13 A |  | 0% → 30% |  |

## Version 3 (data date 2008-08-04, saved 2008-08-15, file ProjectRoadmateProjectPlan.mpp)

Note of the change: Project Plan Updated, pdf file added

Last finish stays 2008-10-24. Complete tasks 15 → 16.

Added:

| ID | Task | Duration | Start | Finish | Predecessors | Constraint | Resources |
| --- | --- | --- | --- | --- | --- | --- | --- |
| 24 | Entity Relationship Diagram | 1d? | 2008-08-13 A | 2008-08-13 A |  |  | Dale Halliwell |
| 25 | Use Cases - Prototype 2 | 1d? | 2008-08-14 A | 2008-08-14 | 24 |  | Lucia Stewart |
| 27 | login/registration/user management functionality | 11d? | 2008-08-15 | 2008-09-12 |  | start no earlier than 2008-08-15 | Carlos Crasborn |
| 28 | Interface and presentation design; profile & rides | 11d? | 2008-08-15 | 2008-09-12 |  |  | Amir Bashir; Lucia Stewart |
| 29 | Accept Ride and Location; updated model this week | 11d? | 2008-08-15 | 2008-09-12 |  |  | Dale Halliwell; Lucia Stewart |
| 31 | Explore unit testing with Selenium | 3d? | 2008-08-15 | 2008-08-19 |  | start no earlier than 2008-08-15 |  |
| 32 | testing | 14d? | 2008-08-20 | 2008-09-22 | 31 |  |  |

Changed:

| ID | Task | Start | Finish | Duration | Complete | Total float | Predecessors |
| --- | --- | --- | --- | --- | --- | --- | --- |
| 21 | Get Familiar with Python and Google API Engine |  |  |  | 99% → 88% | 24.1d → 31.45d |  |
| 22 | **Prototype2** |  |  | 19.5d → 19d? | 2% → 3% | 23.5d → 24d |  |
| 23 | **Scope of Prototype2** |  |  | 2d → 2d? | 30% → 73% | 23.5d → 30d |  |
| 26 | **Design of Prototype2** |  | 2008-09-16 → 2008-09-12 (-4d) | 2.5w → 11d? |  | 23.5d → 30d | 23 → 25 |
| 30 | **Testing phase2** | 2008-09-16 → 2008-08-15 (-32d) | 2008-09-23 → 2008-09-22 (-1d) | 1w → 17d? |  | 23.5d → 24d | 26 → none |

## Version 4 (data date 2008-08-04, saved 2008-09-22, file ProjectRoadmateProjectPlan.mpp)

Note of the change: project plan update 22_Sept_2008 initial commit

Last finish stays 2008-10-24. Complete tasks 16 → 23.

Added:

| ID | Task | Duration | Start | Finish | Constraint | Resources |
| --- | --- | --- | --- | --- | --- | --- |
| 28 | OpenID Login (issue 15) | 12d? | 2008-09-08 A | 2008-09-23 | finish no earlier than 2008-09-23 | Carlos Crasborn [50%] |
| 30 | Add google Maps to View Ride Offer (issue 20) | 2d? | 2008-09-19 A | 2008-09-22 A | finish no earlier than 2008-09-22 | Amir Bashir |
| 31 | Update instructions on Support page | 2d? | 2008-09-22 A | 2008-09-23 A | start no earlier than 2008-09-22 | Lucia Stewart |
| 33 | Update Create Ride Offer to Prototype 2 specification (issue ) | 8d? | 2008-09-12 A | 2008-09-23 | finish no earlier than 2008-09-23 | Dale Halliwell |
| 37 | **Documentation** | 5d? | 2008-09-15 A | 2008-09-19 |  |  |
| 39 | Wiki page: How to deploy RM (issue 16) | 1d? | 2008-09-16 A | 2008-09-16 A | start no earlier than 2008-09-16 | Carlos Crasborn [20%] |
| 40 | Wiki page: How to run RM (issue 17) | 3d? | 2008-09-16 A | 2008-09-18 A | finish no earlier than 2008-09-18 | Carlos Crasborn [20%] |

Changed:

| ID | Task | Start | Finish | Duration | Complete | Total float | Other |
| --- | --- | --- | --- | --- | --- | --- | --- |
| 21 | Get Familiar with Python and Google API Engine |  | 2008-08-12 A |  | 88% → 100% | 31.45d → none |  |
| 22 | **Prototype2** |  |  | 19d? → 20d? | 3% → 83% | 24d → 23d |  |
| 23 | **Scope of Prototype2** |  | 2008-08-14 → 2008-08-21 A (+7d) | 2d? → 7d? | 73% → 100% | 30d → none |  |
| 25 | Use Cases - Prototype 2 (issue 18, 19) |  | 2008-08-14 → 2008-08-21 A (+7d) | 1d? → 6d? | 45% → 100% | 30d → none | was named Use Cases - Prototype 2 |
| 26 | **Design of Prototype2** | 2008-08-15 → 2008-09-08 A (+24d) | 2008-09-12 → 2008-09-23 (+11d) | 11d? → 12d? | 0% → 73% | 30d → 23d |  |
| 27 | **login/registration/user management functionality** | 2008-08-15 → 2008-09-08 A (+24d) | 2008-09-12 → 2008-09-23 (+11d) | 11d? → 12d? | 0% → 60% | 30d → 23d | constraint start no earlier than 2008-08-15 → none |
| 29 | **Interface and presentation design; profile & rides** | 2008-08-15 → 2008-09-19 A (+35d) | 2008-09-12 → 2008-09-23 A (+11d) | 11d? → 3d? | 0% → 100% | 30d → none |  |
| 32 | **Accept Ride and Location; updated model this week** | 2008-08-15 → 2008-09-12 A (+28d) | 2008-09-12 → 2008-09-23 (+11d) | 11d? → 8d? | 0% → 80% | 30d → 23d |  |
| 34 | **Testing phase2** | 2008-08-15 A |  |  | 0% → 79% |  |  |
| 35 | Explore unit testing with Selenium | 2008-08-15 A | 2008-08-19 A |  | 0% → 100% | 38d → none | resources none → Yizhang Yin |
| 36 | testing | 2008-08-20 A |  |  | 0% → 75% |  | resources none → Yizhang Yin |
| 38 | Report2 (issue 23) | 2008-09-15 A |  |  | 0% → 99% |  | was named Report2; resources none → Carlos Crasborn |
| 41 | Prototype2 Presentation |  |  |  |  |  | resources none → Amir Bashir; Carlos Crasborn; Dale Halliwell; Lucia Stewart; Yizhang Yin |

## Version 5 (data date 2008-08-04, saved 2008-09-22, file ProjectRoadmateProjectPlan.mpp)

Note of the change: Prototype2_GanttChart_forReport.pdf initial commit ProjectRoadmateProjectPlan.mpp progress updated

Last finish stays 2008-10-24. Complete tasks 23 → 24.

Changed:

| ID | Task | Finish | Complete | Total float | Other |
| --- | --- | --- | --- | --- | --- |
| 22 | **Prototype2** |  | 83% → 85% |  |  |
| 26 | **Design of Prototype2** |  | 73% → 80% |  |  |
| 32 | **Accept Ride and Location; updated model this week** | 2008-09-23 A | 80% → 100% | 23d → none |  |
| 33 | Update Create Ride Offer to Prototype 2 specification (issue 28) | 2008-09-23 A | 80% → 100% | 23d → none | was named Update Create Ride Offer to Prototype 2 specification (issue ) |

## Version 6 (data date 2008-09-30, saved 2008-09-30, file ProjectRoadmateProjectPlan_30_Sep_2008.mpp)

Note of the change: project plan update 30/09/2008

Last finish stays 2008-10-24. Complete tasks 24 → 26.

Changed:

| ID | Task | Start | Finish | Duration | Complete | Total float | Other |
| --- | --- | --- | --- | --- | --- | --- | --- |
| 22 | **Prototype2** |  |  |  | 85% → 97% |  |  |
| 26 | **Design of Prototype2** |  |  |  | 80% → 92% |  |  |
| 27 | **login/registration/user management functionality** |  |  |  | 60% → 84% |  |  |
| 28 | OpenID Login (issue 15) |  |  |  | 60% → 84% |  | resources Carlos Crasborn [50%] → Carlos Crasborn |
| 34 | **Testing phase2** |  | 2008-09-22 A |  | 79% → 100% | 24d → none |  |
| 36 | testing |  | 2008-09-22 A |  | 75% → 100% | 24d → none |  |
| 37 | **Documentation** |  | 2008-09-19 A |  | 99% → 100% | 0d → none |  |
| 38 | Report2 (issue 23) |  | 2008-09-19 A |  | 99% → 100% | 0d → none |  |
| 39 | Wiki page: How to deploy RM (issue 16) |  |  |  |  |  | resources Carlos Crasborn [20%] → Carlos Crasborn |
| 40 | Wiki page: How to run RM (issue 17) |  |  |  |  |  | resources Carlos Crasborn [20%] → Carlos Crasborn |
| 42 | **Final Product** | 2008-09-23 → 2008-09-26 A (+3d) |  | 20d → 17d | 0% → 15% |  |  |
| 43 | Scope of Final version | 2008-09-23 → 2008-09-26 A (+3d) | 2008-09-24 → 2008-09-29 (+5d) |  | 0% → 60% | 7d → 6d | constraint none → finish no earlier than 2008-09-29 |
| 44 | Design of Final version | 2008-09-26 → 2008-09-30 A (+4d) | 2008-10-09 → 2008-10-13 (+4d) |  | 0% → 20% | 6d → 4d |  |
| 45 | Testing Final Phase | 2008-10-10 → 2008-10-14 (+4d) | 2008-10-16 → 2008-10-20 (+4d) |  |  | 6d → 4d |  |

## Version 7 (data date 2008-09-30, saved 2008-09-30, file ProjectRoadmateProjectPlan_30_Sep_2008.mpp)

Note of the change: Design tasks for final product added

Last finish stays 2008-10-24.

Added:

| ID | Task | Duration | Start | Finish | Predecessors |
| --- | --- | --- | --- | --- | --- |
| 45 | Search via Google Maps wth Timeframe filters | 1d? | 2008-10-14 | 2008-10-14 | 44 |
| 46 | Auto-completition of Address Fields | 1d? | 2008-10-15 | 2008-10-15 | 45 |
| 47 | Google Calendar Integration | 1d? | 2008-10-16 | 2008-10-16 | 46 |
| 48 | Multi-Stops Rides | 1d? | 2008-10-17 | 2008-10-17 | 47 |
| 52 | Selenium | 1d? | 2008-10-20 | 2008-10-20 |  |
| 53 | Silverback | 1d? | 2008-10-20 | 2008-10-20 |  |
| 55 | End User Manual | 1d? | 2008-09-23 | 2008-09-23 |  |
| 56 | Installation administration manual | 1d? | 2008-09-23 | 2008-09-23 |  |

Changed:

| ID | Task | Start | Finish | Duration | Complete | Total float | Predecessors | Other |
| --- | --- | --- | --- | --- | --- | --- | --- | --- |
| 26 | **Design of Prototype2** |  |  |  |  |  | 25 → none |  |
| 42 | **Final Product** | 2008-09-26 A → 2008-09-23 A (-3d) |  | 17d → 20d? | 15% → 16% |  |  |  |
| 51 | **Testing Final Phase** | 2008-10-14 → 2008-10-20 (+6d) |  | 1w → 1d? |  |  | 44 → 48 | constraint start no earlier than 2008-10-09 → none |
| 54 | **Final Documentation** | 2008-10-13 → 2008-09-23 (-20d) | 2008-10-17 → 2008-09-23 (-24d) | 1w → 1d? |  | 0d → 18d |  | constraint finish no earlier than 2008-10-17 → none |

## Version 8 (data date 2008-09-30, saved 2008-09-30, file ProjectRoadmateProjectPlan_30_Sep_2008.mpp)

Note of the change: Design tasks for final product added

Last finish stays 2008-10-24.

Changed:

| ID | Task | Start | Finish | Duration | Complete | Total float | Predecessors | Other |
| --- | --- | --- | --- | --- | --- | --- | --- | --- |
| 42 | **Final Product** | 2008-09-23 A → 2008-09-26 A (+3d) |  | 20d? → 17d? | 16% → 2% |  |  |  |
| 44 | **Design of Final version** | 2008-09-30 A → 2008-09-30 | 2008-10-13 → 2008-10-15 (+2d) | 2w → 11.5d? | 20% → 0% | 4d → 7.5d |  | constraint finish no earlier than 2008-10-09 → none |
| 45 | Search via Google Maps wth Timeframe filters | 2008-10-14 → 2008-09-30 (-14d) | 2008-10-14 → 2008-10-15 (+1d) | 1d? → 11.5d? |  | 4d → 7.5d | 44 → none |  |
| 46 | Auto-completition of Address Fields | 2008-10-15 → 2008-09-30 (-15d) | 2008-10-15 → 2008-09-30 (-15d) |  |  | 4d → 18d | 45 → none |  |
| 47 | Google Calendar Integration | 2008-10-16 → 2008-09-30 (-16d) | 2008-10-16 → 2008-09-30 (-16d) |  |  | 4d → 18d |  |  |
| 48 | Multi-Stops Rides | 2008-10-17 → 2008-09-30 (-17d) | 2008-10-17 → 2008-09-30 (-17d) |  |  | 4d → 18d |  |  |
| 49 | **Testing Final Phase** | 2008-10-20 → 2008-09-26 (-24d) | 2008-10-20 → 2008-10-13 (-7d) | 1d? → 12d? |  | 4d → 9d |  |  |
| 50 | Selenium | 2008-10-20 → 2008-09-26 (-24d) | 2008-10-20 → 2008-10-13 (-7d) | 1d? → 12d? |  | 4d → 9d |  | constraint none → start no earlier than 2008-09-26 |
| 51 | Silverback | 2008-10-20 → 2008-09-26 (-24d) | 2008-10-20 → 2008-10-03 (-17d) | 1d? → 5.5d? |  | 4d → 15.5d |  | constraint none → start no earlier than 2008-09-26 |
| 52 | **Final Documentation** | 2008-09-23 → 2008-09-29 (+6d) | 2008-09-23 → 2008-10-17 (+24d) | 1d? → 15d? |  | 18d → 0d |  |  |
| 53 | End User Manual | 2008-09-23 → 2008-09-30 (+7d) | 2008-09-23 → 2008-10-17 (+24d) | 1d? → 14d? |  | 18d → 0d |  | constraint none → start no earlier than 2008-09-30 |
| 54 | Installation administration manual | 2008-09-23 → 2008-09-29 (+6d) | 2008-09-23 → 2008-10-17 (+24d) | 1d? → 14.5d? |  | 18d → 0.5d |  | constraint none → start no earlier than 2008-09-29 |

## Version 9 (data date 2008-09-30, saved 2008-09-30, file ProjectRoadmateProjectPlan_30_Sep_2008.mpp)

Note of the change: Design tasks for final product updated

Last finish stays 2008-10-24.

Changed:

| ID | Task | Start | Complete | Other |
| --- | --- | --- | --- | --- |
| 42 | **Final Product** |  | 2% → 4% |  |
| 48 | OpenID Integration |  |  | was named Multi-Stops Rides |
| 49 | **Testing Final Phase** | 2008-09-26 A | 0% → 7% |  |
| 50 | Selenium | 2008-09-26 A | 0% → 10% |  |

## Version 10 (data date 2008-09-30, saved 2008-09-30, file ProjectRoadmateProjectPlan_30_Sep_2008.mpp)

Note of the change: Design tasks for final product updated

Last finish stays 2008-10-24.

Changed:

| ID | Task | Other |
| --- | --- | --- |
| 48 | OpenID Integration (issue 15) | was named OpenID Integration |
